# Mesa Vista Clinic: Medical Office Building

Schedule from Primavera P6, 2026-03-02 to 2026-08-21, data date 2026-04-13, A marks actual dates.

## Calendars

- Standard 5 Day Workweek: Mon-Fri 08:00-12:00, 13:00-17:00; Sat-Sun off.

## Resources

| Resource | Group |
| --- | --- |
| Superintendent | labor |
| Project Manager | labor |
| Site Crew | labor |
| Excavator | equipment |
| Plumbers | labor |
| Concrete Crew | labor |
| Steel Erection Crew | labor |
| Crane, 90 ton | equipment |
| Carpentry Crew | labor |
| Roofing Subcontractor | labor |
| Glazing Subcontractor | labor |
| Drywall Crew | labor |
| Painters | labor |
| Flooring Subcontractor | labor |
| Electricians | labor |
| HVAC Crew | labor |

## Schedule

| ID | WBS | Activity | Type | Duration | Start | Finish | Predecessors | Complete | Remaining | Total float | Resources |
| --- | --- | --- | --- | --- | --- | --- | --- | --- | --- | --- | --- |
|  | PRE | **Preconstruction** |  |  | 2026-03-02 | 2026-03-20 |  |  |  |  |  |
| A1000 |  | Notice to proceed | milestone | 0d | 2026-03-02 A | 2026-03-02 A |  | 100% |  |  | Superintendent [8 h] |
| A1010 |  | Submittals: structural steel |  | 10d | 2026-03-02 A | 2026-03-13 A | A1000 | 100% |  |  | Project Manager [80 h] |
| A1020 |  | Submittals: MEP equipment |  | 15d | 2026-03-02 A | 2026-03-20 A | A1000 | 100% |  |  | Project Manager [120 h] |
| A1040 |  | Mobilize site office and fencing |  | 3d | 2026-03-02 A | 2026-03-04 A | A1000 | 100% |  |  | Superintendent [24 h]; Site Crew [24 h] |
| A1030 |  | Building permit issued | milestone | 0d | 2026-03-13 A | 2026-03-13 A | A1000 FS+10d | 100% |  |  |  |
|  | SITE | **Sitework** |  |  | 2026-03-05 | 2026-06-24 |  |  |  |  |  |
| A2000 |  | Clear and grub |  | 4d | 2026-03-05 A | 2026-03-10 A | A1040 | 100% |  |  | Site Crew [32 h]; Excavator [32 h] |
| A2010 |  | Rough grading |  | 6d | 2026-03-11 A | 2026-03-18 A | A2000 | 100% |  |  | Site Crew [48 h]; Excavator [48 h] |
| A2020 |  | Underground utilities |  | 10d | 2026-03-16 A | 2026-03-27 A | A2010 SS+3d | 100% |  |  | Plumbers [80 h]; Excavator [80 h] |
| A2030 |  | Storm drainage |  | 8d | 2026-03-19 A | 2026-03-30 A | A2010 | 100% |  |  | Site Crew [64 h] |
| A2040 |  | Building pad preparation |  | 5d | 2026-03-19 A | 2026-03-25 A | A2010 | 100% |  |  | Site Crew [40 h]; Excavator [40 h] |
| A2050 |  | Paving and striping |  | 6d | 2026-06-17 | 2026-06-24 | A5030, A2030 |  |  | 33d | Site Crew [48 h] |
|  | FND | **Foundations** |  |  | 2026-03-26 | 2026-04-16 |  |  |  |  |  |
| A3000 |  | Excavate footings |  | 4d | 2026-03-26 A | 2026-03-31 A | A2040, A1030 | 100% |  |  | Concrete Crew [32 h]; Excavator [32 h] |
| A3010 |  | Rebar and forms: footings |  | 4d | 2026-03-30 A | 2026-04-02 A | A3000 SS+2d | 100% |  |  | Concrete Crew [32 h] |
| A3020 |  | Pour footings |  | 2d | 2026-04-03 A | 2026-04-06 A | A3010 | 100% |  |  | Concrete Crew [16 h] |
| A3030 |  | Under-slab plumbing |  | 5d | 2026-04-07 A | 2026-04-13 | A3020 | 80% | 1d | 1d | Plumbers [40 h] |
| A3040 |  | Slab on grade |  | 3d | 2026-04-14 | 2026-04-16 | A3030, A2020 |  |  | 1d | Concrete Crew [24 h] |
| A3050 |  | Foundations complete | milestone | 0d | 2026-04-16 | 2026-04-16 | A3040 |  |  | 1d |  |
|  | STR | **Structure** |  |  | 2026-03-16 | 2026-05-12 |  |  |  |  |  |
| A4000 |  | Steel fabrication (off site) |  | 25d | 2026-03-16 A | 2026-04-17 | A1010 | 80% | 5d | 0d |  |
| A4010 |  | Erect structural steel |  | 12d | 2026-04-20 | 2026-05-05 | A3050, A4000 |  |  | 0d | Steel Erection Crew [96 h]; Crane, 90 ton [96 h] |
| A4020 |  | Metal deck |  | 6d | 2026-04-27 | 2026-05-04 | A4010 SS+5d |  |  | 3d | Steel Erection Crew [48 h] |
| A4030 |  | Pour elevated slab |  | 3d | 2026-05-05 | 2026-05-07 | A4020 |  |  | 3d | Concrete Crew [24 h] |
| A4040 |  | Roof framing |  | 5d | 2026-05-06 | 2026-05-12 | A4010 |  |  | 0d | Steel Erection Crew [40 h]; Crane, 90 ton [40 h] |
| A4050 |  | Structure topped out | milestone | 0d | 2026-05-12 | 2026-05-12 | A4030, A4040 |  |  | 0d |  |

| ID | WBS | Activity | Type | Duration | Start | Finish | Predecessors | Total float | Resources |
| --- | --- | --- | --- | --- | --- | --- | --- | --- | --- |
|  | ENV | **Building Envelope** |  |  | 2026-05-13 | 2026-06-16 |  |  |  |
| A5000 |  | Exterior framing and sheathing |  | 10d | 2026-05-13 | 2026-05-26 | A4050 | 0d | Carpentry Crew [80 h] |
| A5010 |  | Roofing |  | 8d | 2026-05-13 | 2026-05-22 | A4040 | 6d | Roofing Subcontractor [64 h] |
| A5020 |  | Windows and storefront |  | 10d | 2026-05-19 | 2026-06-01 | A5000 SS+4d | 0d | Glazing Subcontractor [80 h] |
| A5030 |  | Exterior finish system |  | 15d | 2026-05-27 | 2026-06-16 | A5000 | 33d | Carpentry Crew [120 h] |
| A5040 |  | Building dried in | milestone | 0d | 2026-06-01 | 2026-06-01 | A5010, A5020 | 0d |  |
|  | MEP | **Mechanical, Electrical and Plumbing** |  |  | 2026-05-25 | 2026-08-10 |  |  |  |
| A7040 |  | Set rooftop HVAC units |  | 2d | 2026-05-25 | 2026-05-26 | A5010, A1020 | 42d | HVAC Crew [16 h]; Crane, 90 ton [16 h] |
| A7000 |  | Rough-in: plumbing |  | 12d | 2026-06-02 | 2026-06-17 | A5040 | 3d | Plumbers [96 h] |
| A7010 |  | Rough-in: HVAC ductwork |  | 15d | 2026-06-02 | 2026-06-22 | A5040, A1020 | 0d | HVAC Crew [120 h] |
| A7020 |  | Rough-in: electrical |  | 14d | 2026-06-02 | 2026-06-19 | A5040 | 1d | Electricians [112 h] |
| A7030 |  | Rough-in inspections |  | 2d | 2026-06-23 | 2026-06-24 | A7000, A7010, A7020 | 0d | Superintendent [16 h] |
| A7050 |  | MEP trim and startup |  | 8d | 2026-07-24 | 2026-08-04 | A6040, A7040 | 0d | Electricians [64 h]; Plumbers [64 h]; HVAC Crew [64 h] |
| A7060 |  | Test and balance |  | 4d | 2026-08-05 | 2026-08-10 | A7050 | 0d | HVAC Crew [32 h] |
|  | INT | **Interiors** |  |  | 2026-06-02 | 2026-08-07 |  |  |  |
| A6000 |  | Interior framing |  | 12d | 2026-06-02 | 2026-06-17 | A5040 | 5d | Carpentry Crew [96 h] |
| A6010 |  | Drywall hang, tape and finish |  | 15d | 2026-06-25 | 2026-07-15 | A6000, A7030 | 0d | Drywall Crew [120 h] |
| A6020 |  | Paint |  | 8d | 2026-07-09 | 2026-07-20 | A6010 FF+3d | 0d | Painters [64 h] |
| A6040 |  | Ceilings and light fixtures |  | 8d | 2026-07-14 | 2026-07-23 | A6020 SS+3d | 0d | Electricians [64 h]; Drywall Crew [64 h] |
| A6030 |  | Flooring |  | 8d | 2026-07-21 | 2026-07-30 | A6020 | 1d | Flooring Subcontractor [64 h] |
| A6050 |  | Casework, doors and hardware |  | 6d | 2026-07-31 | 2026-08-07 | A6030 | 1d | Carpentry Crew [48 h] |
|  | CLO | **Closeout** |  |  | 2026-08-11 | 2026-08-21 |  |  |  |
| A8000 |  | Punch list |  | 6d | 2026-08-11 | 2026-08-18 | A6050, A7060, A2050 | 0d | Superintendent [48 h] |
| A8010 |  | Final inspections |  | 3d | 2026-08-19 | 2026-08-21 | A8000 | 0d | Superintendent [24 h] |
| A8020 |  | Certificate of occupancy | milestone | 0d | 2026-08-21 | 2026-08-21 | A8010 | 0d |  |
